# Software Development

How a schedule from MS Project changed from version to version. A marks actual dates.

## Version 1 (saved 2018-11-23, file PWCPhase2Dev.mpp)

| ID | WBS | Task | Duration | Start | Finish | Predecessors | Total float | Constraint |
| --- | --- | --- | --- | --- | --- | --- | --- | --- |
| 1 | 1 | **Scope** | 1.5d | 2018-10-15 | 2018-10-16 |  | 30d |  |
| 2 |  | Determine project scope | 4h | 2018-10-15 | 2018-10-15 |  | 9.5d | start no earlier than 2018-10-15 |
| 3 |  | Secure core resources | 1d | 2018-10-15 | 2018-10-16 | 2 | 9.5d |  |
| 4 |  | Scope complete | 0d | 2018-10-16 | 2018-10-16 | 3 | 9.5d |  |
| 5 | 2 | **Analysis/Software Requirements** | 9d | 2018-10-18 | 2018-10-29 |  | 28.5d |  |
| 6 |  | Draft SRS | 3d | 2018-10-18 | 2018-10-20 | 4 | 11d | finish no earlier than 2018-10-20 |
| 7 |  | Review SRS (PWC + Verbat Meet up) | 3d | 2018-10-22 | 2018-10-24 | 6 | 11d | start no earlier than 2018-10-22 |
| 8 |  | Incorporate feedback on SRS | 2d | 2018-10-25 | 2018-10-26 | 7 | 11d | finish no earlier than 2018-10-24 |
| 9 |  | Update delivery Schedule | 1d | 2018-10-29 | 2018-10-29 | 8 | 66d |  |
| 10 |  | Obtain approvals to proceed | 8h | 2018-10-29 | 2018-10-29 | 8 | 11d | start no earlier than 2018-10-26 |
| 11 |  | Analysis complete | 0d | 2018-10-29 | 2018-10-29 | 10 | 7d |  |
| 12 | 3 | **Design** | 7d | 2018-10-30 | 2018-11-06 |  | 28.5d |  |
| 13 |  | Develop prototype | 5d | 2018-10-30 | 2018-11-03 | 11 | 59d | start no earlier than 2018-10-26 |
| 14 |  | Final approve of SRS and Review prototype | 1d | 2018-10-30 | 2018-10-30 | 11 | 11d | start no earlier than 2018-10-26 |
| 15 |  | Incorporate feedback on prototype | 2d | 2018-11-05 | 2018-11-06 | 13 | 59d | start no earlier than 2018-10-30 |
| 16 |  | Database Design | 2d | 2018-10-31 | 2018-11-01 | 14 | 19.5d | start no earlier than 2018-10-29 |
| 17 |  | Obtain approval to proceed | 4h | 2018-11-02 | 2018-11-02 | 16 | 19.5d |  |
| 18 |  | Design complete | 0d | 2018-11-02 | 2018-11-02 | 17 | 20.5d |  |
| 19 | 4 | **Development** | 71.01d | 2018-10-15 | 2019-01-16 |  | 6d |  |
| 20 | 4.1 | **Web Admin** | 43.5d | 2018-11-02 | 2018-12-28 | 18 | 28d |  |
| 21 |  | Confirm Database Design | 8h | 2018-11-02 | 2018-11-03 |  | 19.5d |  |
| 22 |  | Master Data Management | 3d | 2018-11-03 | 2018-11-07 | 21 | 19.5d | finish no earlier than 2018-11-03 |
| 23 |  | User management with roles & entitlements | 2d | 2018-11-03 | 2018-11-06 | 21 | 38.5d | finish no earlier than 2018-11-03 |
| 24 |  | Manage Corp Clients | 1d | 2018-11-06 | 2018-11-07 | 23 | 38.5d | start no earlier than 2018-11-06 |
| 25 |  | Price Management : Price configuration | 2d | 2018-11-07 | 2018-11-09 | 22 | 19.5d |  |
| 26 |  | Plan Management | 3d | 2018-11-07 | 2018-11-12 | 24 | 38.5d | start no earlier than 2018-11-07 |
| 27 |  | IP Management for corporate clients | 2d | 2018-11-09 | 2018-11-13 | 25 | 19.5d |  |
| 28 |  | Help Center | 2d | 2018-11-12 | 2018-11-14 | 26 | 38.5d |  |
| 29 |  | Notification Management | 3d | 2018-11-13 | 2018-11-16 | 27 | 19.5d |  |
| 30 |  | Video Management | 2d | 2018-11-14 | 2018-11-16 | 28 | 38.5d |  |
| 31 |  | Plan Upgrade (change selected plan) | 4d | 2018-11-16 | 2018-11-21 | 29 | 19.5d |  |
| 32 |  | Data gathering based on plan selection (Upgrade Wizard) | 4d | 2018-11-16 | 2018-11-21 | 30 | 38.5d | start no earlier than 2018-11-16 |
| 33 |  | Resubmit returns | 3d | 2018-11-21 | 2018-11-26 | 31 | 19.5d |  |
| 34 |  | Revise returns | 3d | 2018-11-21 | 2018-11-26 | 32 | 38.5d |  |
| 35 |  | Billing, Invoicing, End userTx summary | 3d | 2018-11-26 | 2018-11-29 | 34 | 38.5d |  |
| 36 |  | End user Listing: Year wise user management screen | 2d | 2018-11-26 | 2018-11-28 | 33 | 19.5d |  |
| 37 |  | Unlock User | 1d | 2018-11-28 | 2018-11-29 | 36 | 19.5d |  |
| 38 |  | Dashboard Updates | 3d | 2018-11-30 | 2018-12-04 | 35 | 38d | start no earlier than 2018-11-30 |
| 39 |  | Logging, Auditing, event logs, Security, Brush up | 3d | 2018-11-30 | 2018-12-04 | 37 | 19d | start no earlier than 2018-11-30 |
| 40 |  | API Integration, Japanese, Misc | 12d | 2018-12-05 | 2018-12-20 | 37 | 20d | start no earlier than 2018-12-05 |
| 41 |  | Implementaion of domain name instead of IP | 2d | 2018-12-05 | 2018-12-06 | 39 | 19d | start no earlier than 2018-12-05 |
| 42 |  | Implementaion of Help | 3d | 2018-12-07 | 2018-12-11 | 41 | 19d |  |
| 43 |  | Enabling and disabling feature for the master data in the admin | 1d | 2018-12-12 | 2018-12-12 | 42 | 19d |  |
| 44 |  | All the Deduction tabs to be consolidated to a single page/form | 1d | 2018-12-13 | 2018-12-13 | 43 | 19d |  |
| 45 |  | New main tab for foreign assests with new features | 5d | 2018-12-14 | 2018-12-20 | 44 | 19d |  |
| 46 |  | Dashboard - Tax summary 2 tabs to show revised | 1d | 2018-12-21 | 2018-12-21 | 40 | 20d |  |
| 47 |  | Revise return | 1d | 2018-12-21 | 2018-12-21 | 45 | 19d |  |
| 48 |  | Review to show sub section status | 1d | 2018-12-22 | 2018-12-22 | 46 | 20d |  |
| 49 |  | Plan change auditing | 2d | 2018-12-22 | 2018-12-24 | 47 | 19d |  |
| 50 |  | Currency field along with amount field | 4d | 2018-12-24 | 2018-12-27 | 48 | 20d |  |
| 51 |  | The system should alert the user during Multiple Login. Upon clicking “Confirm”, the system should log out the user from the previous session. | 1d | 2018-12-25 | 2018-12-25 | 49 | 19d |  |
| 52 |  | Minor changes(Estimated) | 3d | 2018-12-26 | 2018-12-28 | 51 | 19d |  |
| 53 |  | Development complete | 0d | 2018-12-28 | 2018-12-28 | 52 | 19d |  |
| 54 | 4.2 | **Web API** | 25d | 2018-10-22 | 2018-11-21 |  | 0d |  |
| 55 |  | Login Management | 2d | 2018-10-22 | 2018-10-23 |  | 0d | start no earlier than 2018-10-22 |
| 56 |  | Assessment year | 1d | 2018-10-24 | 2018-10-24 | 55 | 0d |  |
| 57 |  | Plan selection | 2d | 2018-10-25 | 2018-10-26 | 56 | 0d |  |
| 58 |  | XML Uploads | 2d | 2018-10-29 | 2018-10-30 | 57 | 0d |  |
| 59 |  | Tax filing | 15d | 2018-10-31 | 2018-11-17 | 58 | 0d |  |
| 60 |  | Dashboard Updates | 3d | 2018-11-19 | 2018-11-21 | 59 | 0d |  |
| 61 |  | Development complete | 0d | 2018-11-21 | 2018-11-21 | 60 | 0d |  |
| 62 | 4.3 | **Japanese Langauge integration** | 35d | 2018-11-21 | 2019-01-08 |  | 0d |  |
| 63 |  | Create Resource File | 0d | 2018-11-21 | 2018-11-21 | 61 | 0d |  |
| 64 |  | Create Multi language Routes and Route handling mechanism (includes SEO) | 0d | 2018-11-21 | 2018-11-21 | 63 | 0d |  |
| 65 |  | Activate Culture & Upgrade content, labels and form values | 0d | 2018-11-21 | 2018-11-21 | 64 | 0d |  |
| 66 |  | Total # of pages to modify 78 | 35d | 2018-11-22 | 2019-01-08 | 65 | 0d | start no earlier than 2018-11-21 |
| 67 |  | Development complete | 0d | 2019-01-08 | 2019-01-08 | 66 | 12d |  |
| 68 | 4.4 | **Mobile App** | 71.01d | 2018-10-15 | 2019-01-16 |  | 7.99d |  |
| 69 |  | SRS | 6d | 2018-10-15 | 2018-10-20 |  | 0.99d | finish no earlier than 2018-10-20 |
| 70 |  | Confirm SRS (PWC + Verbat Meet up) | 4d | 2018-10-22 | 2018-10-25 | 69 | 0.99d | finish no earlier than 2018-10-25 |

| ID | WBS | Task | Duration | Start | Finish | Predecessors | Total float | Constraint |
| --- | --- | --- | --- | --- | --- | --- | --- | --- |
| 71 |  | Wire Frames | 2d | 2018-10-26 | 2018-10-29 | 70 | 0.99d | finish no earlier than 2018-10-29 |
| 72 |  | PWC review of wireframes | 5d | 2018-10-30 | 2018-11-03 | 71 | 49d | finish no earlier than 2018-11-03 |
| 73 |  | Prototype and Designing | 12d | 2018-11-07 | 2018-11-21 | 72 | 47d | start no earlier than 2018-11-07 |
| 74 |  | Splash Screen, Login etc. | 2d | 2018-10-30 | 2018-10-31 | 71 | 0.99d |  |
| 75 |  | Dashboard(Tax Summary, Chellan, Filter, Uploaded docs, ITR related docs, Approve, Notifications, Yearly Summary) | 2d | 2018-11-01 | 2018-11-02 | 74 | 0.99d |  |
| 76 |  | Home page | 0.75d | 2018-11-03 | 2018-11-03 | 75 | 0.99d |  |
| 77 |  | Registration | 1d | 2018-11-03 | 2018-11-05 | 76 | 0.99d |  |
| 78 |  | OTP verification page | 0.38d | 2018-11-05 | 2018-11-06 | 77 | 0.99d |  |
| 79 |  | Video | 1d | 2018-11-06 | 2018-11-07 | 78 | 0.99d |  |
| 80 |  | Pricing and comparision page | 2d | 2018-11-07 | 2018-11-09 | 79 | 0.99d |  |
| 81 |  | Platinum Plan Notification | 0.38d | 2018-11-09 | 2018-11-09 | 80 | 0.99d |  |
| 82 |  | XML upload from different storage space | 1d | 2018-11-09 | 2018-11-12 | 81 | 0.99d |  |
| 83 |  | Implementaion of Help (video, image) | 1.5d | 2018-11-12 | 2018-11-14 | 82 | 0.99d |  |
| 84 |  | Plan change auditing | 2d | 2018-11-14 | 2018-11-16 | 83 | 0.99d |  |
| 85 |  | Revise return | 1d | 2018-11-16 | 2018-11-17 | 84 | 0.99d |  |
| 86 |  | Tax summary 2 tabs to show revised | 1d | 2018-11-17 | 2018-11-19 | 85 | 0.99d |  |
| 87 |  | Currency field along with amount field (Design Change) | 2d | 2018-11-19 | 2018-11-21 | 86 | 0.99d |  |
| 88 |  | XML prefill controls to be grouped (only Design Change) | 1d | 2018-11-21 | 2018-11-22 | 87 | 0.99d |  |
| 89 |  | Foreign Assets | 5d | 2018-11-22 | 2018-11-29 | 88 | 0.99d |  |
| 90 |  | Start Tax Return (Year / Package selection, Prefill XML / PAN) | 2d | 2018-11-29 | 2018-12-03 | 89 | 0.99d |  |
| 91 |  | Personal details | 2d | 2018-12-03 | 2018-12-05 | 90 | 0.99d |  |
| 92 |  | Bank Details | 2d | 2018-12-05 | 2018-12-07 | 91 | 0.99d |  |
| 93 |  | Assets & Liabelities | 3d | 2018-12-07 | 2018-12-12 | 92 | 0.99d |  |
| 94 |  | Salary | 2d | 2018-12-12 | 2018-12-14 | 93 | 0.99d |  |
| 95 |  | Other Income | 3d | 2018-12-14 | 2018-12-19 | 94 | 0.99d |  |
| 96 |  | House property | 3d | 2018-12-19 | 2018-12-22 | 95 | 0.99d |  |
| 97 |  | Section 80 | 3d | 2018-12-22 | 2018-12-26 | 96 | 0.99d |  |
| 98 |  | More Deductions (80E, 80CCC etc.) | 3d | 2018-12-26 | 2018-12-31 | 97 | 0.99d |  |
| 99 |  | Taxes paid (Upload 26AS, Challan Details, Summary & review, PDF report, Payment) | 3d | 2018-12-31 | 2019-01-03 | 98 | 0.99d |  |
| 100 |  | Help center (Chat bot, Whats new) | 3d | 2019-01-03 | 2019-01-08 | 99 | 0.99d |  |
| 101 |  | Static Pages (FAQ, T&C, Privacy, legal, support, Contact) | 3d | 2019-01-08 | 2019-01-11 | 100 | 0.99d |  |
| 102 |  | API integration | 3d | 2019-01-11 | 2019-01-16 | 101 | 0.99d |  |
| 103 | 5 | **Testing** | 72d | 2018-11-01 | 2019-02-05 |  | 1d |  |
| 104 | 5.1 | **Web Dev** | 8d | 2018-11-01 | 2018-11-09 |  | 36d |  |
| 105 |  | Test scenarios | 4d | 2018-11-01 | 2018-11-05 | 14 | 10d | finish no earlier than 2018-11-05 |
| 106 |  | Test Cases | 4d | 2018-11-06 | 2018-11-09 | 105 | 10d | finish no earlier than 2018-10-18 |
| 107 | 5.2 | **Mobile Dev** | 8d | 2018-11-15 | 2018-11-23 |  | 54d |  |
| 108 |  | Test Scenarios | 4d | 2018-11-15 | 2018-11-19 |  | 45d | start no earlier than 2018-11-15 |
| 109 |  | Test Cases | 4d | 2018-11-20 | 2018-11-23 | 108 | 45d |  |
| 110 | 5.3 | **Functional Testing** | 52d | 2018-11-19 | 2019-01-28 |  | 7d |  |
| 111 | 5.3.1 | **Web App** | 52d | 2018-11-19 | 2019-01-28 |  | 7d |  |
| 112 |  | Module testing | 20d | 2018-11-19 | 2018-12-14 | 106 | 4d | start no earlier than 2018-11-19 |
| 113 |  | Test component modules to product specifications | 3d | 2018-12-18 | 2018-12-20 | 112 | 3d | finish no earlier than 2018-12-20 |
| 114 |  | Identify anomalies to product specifications | 6d | 2018-12-21 | 2018-12-27 | 113 | 3d | finish no earlier than 2018-12-27 |
| 115 |  | Modify code | 4d | 2019-01-09 | 2019-01-14 | 66 | 0d | finish no earlier than 2018-12-28 |
| 116 |  | Re-test modified code | 10d | 2019-01-15 | 2019-01-28 | 115 | 0d | start no earlier than 2019-01-02 |
| 117 |  | Functional testing complete | 0d | 2019-01-28 | 2019-01-28 | 116 | 0d |  |
| 118 | 5.3.2 | **Mobile App** | 41.01d | 2018-12-03 | 2019-01-28 |  | 7.99d |  |
| 119 |  | Module Testing | 20d | 2018-12-03 | 2018-12-27 | 106 | 17d | start no earlier than 2018-12-03 |
| 120 |  | Test component modules to product specifications | 2d | 2018-12-28 | 2018-12-31 | 119 | 17d |  |
| 121 |  | Identify anomalies to product specifications | 1d | 2019-01-01 | 2019-01-01 | 120 | 17d |  |
| 122 |  | Modify code | 6d | 2019-01-16 | 2019-01-24 | 102 | 7.99d |  |
| 123 |  | Re-test modified code | 2d | 2019-01-24 | 2019-01-28 | 122 | 7.99d |  |
| 124 |  | Functional testing complete | 0d | 2019-01-28 | 2019-01-28 | 123 | 7.99d |  |
| 125 | 5.4 | **Integration Testing** | 6d | 2019-01-29 | 2019-02-05 |  | 0d |  |
| 126 |  | Test module integration | 2d | 2019-01-29 | 2019-01-30 | 117 | 0d |  |
| 127 |  | Identify anomalies to specifications | 1d | 2019-01-31 | 2019-01-31 | 126 | 0d |  |
| 128 |  | Modify code | 2d | 2019-02-01 | 2019-02-04 | 127 | 0d |  |
| 129 |  | Re-test modified code | 1d | 2019-02-05 | 2019-02-05 | 128 | 0d |  |
| 130 |  | Integration testing complete | 0d | 2019-02-05 | 2019-02-05 | 129 | 0d |  |
| 131 | 6 | **Deployment** | 1d | 2019-02-05 | 2019-02-06 |  | 0d |  |
| 132 |  | Determine final deployment strategy | 0d | 2019-02-05 | 2019-02-05 | 130 | 0d |  |
| 133 |  | Deploy software | 1d | 2019-02-06 | 2019-02-06 | 132 | 0d |  |
| 134 |  | Deployment complete | 0d | 2019-02-06 | 2019-02-06 | 133 | 0d |  |

## Version 2 (saved 2018-11-28, file PWCPhase2DevNov27 (1).mpp)

Last finish 2019-02-06 → 2019-03-21 (+43d). Complete tasks 0 → 12.

Added:

| ID | Task | Duration | Start | Finish | Predecessors | Constraint | Resources |
| --- | --- | --- | --- | --- | --- | --- | --- |
| 10 | Admin SRS Approval | 2d | 2018-11-16 A | 2018-11-17 A | 9 | finish no earlier than 2018-11-09 | PWC |
| 11 | Phase 1 Changes SRS Approval | 3d | 2018-11-08 A | 2018-11-12 A | 10 | finish no earlier than 2018-11-12 | PWC |
| 12 | Mobile SRS Approval | 5d | 2018-11-13 A | 2018-11-17 A | 11 | finish no earlier than 2018-11-14 | PWC |
| 13 | Japanese Text | 1d | 2018-11-19 A | 2018-11-19 A | 12 |  | PWC |
| 21 | Mobile Initial Design Approval | 12d | 2018-11-15 | 2018-12-03 | 20 | finish no earlier than 2018-11-22 | PWC |
| 22 | Front End New Change Design | 10d | 2018-11-09 | 2018-11-21 | 20 |  | UI/UX 2 |
| 29 | Discount | 1.5d | 2018-11-16 | 2018-11-17 | 28 | start no earlier than 2018-11-16 | Developer 2 |
| 30 | Revise Return Fee | 2d | 2018-11-16 | 2018-11-17 | 27 | start no earlier than 2018-11-16 | Developer 1 |
| 32 | Tax Day Count Down | 2d | 2018-11-21 | 2018-11-22 | 31 | start no earlier than 2018-11-20 | Developer 1 |
| 35 | Super Admin | 2d | 2018-11-20 | 2018-11-21 |  | start no earlier than 2018-11-20 | Developer 2 |
| 38 | Help Center - Unassigned | 0d | 2018-11-29 | 2018-11-29 | 34 | start no earlier than 2018-11-29 |  |
| 40 | Reports(5) | 5d | 2018-11-30 | 2018-12-05 | 38 | start no earlier than 2018-11-30 | Developer 2; Developer 1 |
| 41 | Front End | 17d | 2018-10-10 | 2018-10-31 |  |  |  |
| 101 | Test Plan | 4d | 2018-11-20 | 2018-11-23 |  | start no earlier than 2018-11-20 | Lead QA |
| 102 | Requirement Tracability Matrix | 5d | 2018-11-28 | 2018-12-03 |  | start no earlier than 2018-11-28 | QA 1 |
| 109 | **Front End Changes** | 12d | 2018-12-24 | 2019-01-05 |  |  |  |
| 113 | **Admin** | 31d | 2018-12-06 | 2019-01-11 |  |  |  |
| 114 | Module Testing | 7d | 2018-12-06 | 2018-12-14 | 40 | start no earlier than 2018-12-06 | QA 1 |
| 115 | Modify code | 4d | 2019-01-03 | 2019-01-07 | 114 | start no earlier than 2019-01-03 | Development Team |
| 116 | Re-test modified code | 4d | 2019-01-08 | 2019-01-11 | 115 | start no earlier than 2019-01-08 | QA 1 |
| 123 | **Web App** | 19d | 2019-01-07 | 2019-01-30 |  |  |  |
| 129 | **Mobile App** | 20d | 2019-02-21 | 2019-03-20 |  |  |  |
| 130 | Test module integration | 10d | 2019-02-21 | 2019-03-06 | 119 | start no earlier than 2019-02-21 | Testers |
| 131 | Identify anomalies to specifications | 1d | 2019-03-07 | 2019-03-07 | 130 | start no earlier than 2019-03-07 | Testers |
| 132 | Modify code | 2d | 2019-03-11 | 2019-03-12 | 131 | start no earlier than 2019-03-11 | Development Team |
| 133 | Re-test modified code | 4d | 2019-03-13 | 2019-03-18 | 132 | start no earlier than 2019-03-13 | Testers |
| 134 | Integration testing complete | 2d | 2019-03-19 | 2019-03-20 | 133 | start no earlier than 2019-03-19 |  |
| 138 | Deploy Mobile apps | 1d | 2019-03-21 | 2019-03-21 | 134 |  | Deployment Team |

Removed: 10 Obtain approvals to proceed; 15 Incorporate feedback on prototype; 21 Confirm Database Design; 25 Price Management : Price configuration; 27 IP Management for corporate clients; 28 Help Center; 32 Data gathering based on plan selection (Upgrade Wizard); 34 Revise returns; 35 Billing, Invoicing, End userTx summary; 37 Unlock User; 40 API Integration, Japanese, Misc; 69 SRS; 70 Confirm SRS (PWC + Verbat Meet up); 71 Wire Frames; 72 PWC review of wireframes; 73 Prototype and Designing; 105 Test scenarios; 108 Test Scenarios; 113 Test component modules to product specifications; 114 Identify anomalies to product specifications; 117 Functional testing complete; 120 Test component modules to product specifications; 124 Functional testing complete

Changed:

| ID | Task | Start | Finish | Duration | Complete | Total float | Predecessors | Other |
| --- | --- | --- | --- | --- | --- | --- | --- | --- |
| 1 | **Scope** | 2018-10-15 A | 2018-10-16 A |  | 0% → 100% | 30d → none |  |  |
| 2 | Determine project scope | 2018-10-15 A | 2018-10-15 A |  | 0% → 100% | 9.5d → none |  |  |
| 3 | Secure core resources | 2018-10-15 A | 2018-10-16 A |  | 0% → 100% | 9.5d → none |  |  |
| 4 | Scope complete | 2018-10-16 A | 2018-10-16 A |  | 0% → 100% | 9.5d → none |  |  |
| 5 | **Analysis/Software Requirements** | 2018-10-18 → 2018-10-22 A (+4d) | 2018-10-29 → 2018-11-19 A (+21d) | 9d → 23d | 0% → 100% | 28.5d → none |  |  |
| 6 | Draft SRS(Admin) | 2018-10-18 → 2018-11-02 A (+15d) | 2018-10-20 → 2018-11-03 A (+14d) | 3d → 2d | 0% → 100% | 11d → none |  | was named Draft SRS; constraint finish no earlier than 2018-10-20 → finish no earlier than 2018-11-03 |
| 7 | Review SRS (PWC + Verbat Meet up) | 2018-10-22 → 2018-11-05 A (+14d) | 2018-10-24 → 2018-11-07 A (+14d) |  | 0% → 100% | 11d → none |  | constraint start no earlier than 2018-10-22 → start no earlier than 2018-10-31 |
| 8 | Incorporate feedback on SRS(Admin+Mobile+Phase 1 Changes) | 2018-10-25 → 2018-11-08 A (+14d) | 2018-10-26 → 2018-11-14 A (+19d) | 2d → 5d | 0% → 100% | 11d → none |  | was named Incorporate feedback on SRS; constraint finish no earlier than 2018-10-24 → start no earlier than 2018-11-05 |
| 9 | Update delivery Schedule | 2018-10-29 → 2018-11-15 A (+17d) | 2018-10-29 → 2018-11-15 A (+17d) |  | 0% → 100% | 66d → none |  |  |
| 14 | Analysis complete | 2018-10-29 → 2018-10-22 A (-7d) | 2018-10-29 → 2018-10-22 A (-7d) | 0d → 1d | 0% → 100% | 7d → none | Obtain approvals to proceed → 13 |  |
| 15 | **Design** | 2018-10-30 → 2018-11-03 (+4d) | 2018-11-06 → 2018-12-03 (+27d) | 7d → 25d? |  | 28.5d → 5d |  |  |
| 16 | Develop prototype(Admin) | 2018-10-30 → 2018-11-13 (+14d) | 2018-11-03 → 2018-11-19 (+16d) | 5d → 6d |  | 59d → 89d | 14 → none | was named Develop prototype; constraint start no earlier than 2018-10-26 → finish no earlier than 2018-11-19 |
| 17 | Approval of Admin prototype | 2018-10-30 → 2018-11-20 (+21d) | 2018-10-30 → 2018-11-23 (+24d) | 1d → 4d |  | 11d → 89d | 14 → 16 | was named Final approve of SRS and Review prototype; constraint start no earlier than 2018-10-26 → finish no earlier than 2018-11-22 |
| 18 | Database Design | 2018-10-31 → 2018-11-24 (+24d) | 2018-11-01 → 2018-11-26 (+25d) |  |  | 19.5d → 89d |  | constraint start no earlier than 2018-10-29 → start no earlier than 2018-10-22 |
| 19 | Obtain approval to proceed | 2018-11-02 → 2018-11-27 (+25d) | 2018-11-02 → 2018-11-27 (+25d) | 4h → 8h |  | 19.5d → 89d |  | constraint none → start no earlier than 2018-10-24; resources Management; Project Manager → Management |
| 20 | Mobile Initial Design | 2018-11-02 → 2018-11-03 (+1d) | 2018-11-02 → 2018-11-08 (+6d) | 0d → 5d |  | 20.5d → 85d | 19 → none | was named Design complete; constraint none → finish no earlier than 2018-11-08; resources Project Manager → UI/UX 2 |
| 23 | **Development** | 2018-10-15 → 2018-10-10 (-5d) | 2019-01-16 → 2019-02-11 (+26d) | 71.01d → 100d? |  | 6d → 29d |  |  |
| 24 | **Web Admin** | 2018-11-02 → 2018-10-10 (-23d) | 2018-12-28 → 2018-12-31 (+3d) | 43.5d → 67d? |  | 28d → 40d | 20 → none |  |
| 25 | Master Data Management | 2018-11-03 → 2018-11-07 (+4d) | 2018-11-07 → 2018-11-09 (+2d) |  |  | 19.5d → 60d | Confirm Database Design → none | constraint finish no earlier than 2018-11-03 → start no earlier than 2018-11-07; resources Developer 2 → Developer 1 |
| 26 | Logging, Auditing, event logs, Security, Brush up | 2018-11-30 → 2018-11-07 (-23d) | 2018-12-04 → 2018-11-09 (-25d) |  |  | 19d → 92.5d | Unlock User → none | constraint start no earlier than 2018-11-30 → start no earlier than 2018-11-07 |
| 27 | Plan Management | 2018-11-07 → 2018-11-12 (+5d) | 2018-11-12 → 2018-11-15 (+3d) | 3d → 4d |  | 38.5d → 60d | 28 → 25 | constraint start no earlier than 2018-11-07 → start no earlier than 2018-11-12 |
| 28 | Manage Corp Clients | 2018-11-06 → 2018-11-12 (+6d) | 2018-11-07 → 2018-11-15 (+8d) | 1d → 4d |  | 38.5d → 92.5d | 36 → 26 | constraint start no earlier than 2018-11-06 → start no earlier than 2018-11-12; resources Developer 1 → Developer 2 |
| 31 | Notification Management | 2018-11-13 → 2018-11-19 (+6d) | 2018-11-16 → 2018-11-20 (+4d) | 3d → 2d |  | 19.5d → 60d | IP Management for corporate clients → 30 | constraint none → start no earlier than 2018-11-17; resources Developer 2 → Developer 1 |
| 33 | Resubmit returns | 2018-11-21 → 2018-11-19 (-2d) | 2018-11-26 → 2018-11-19 (-7d) | 3d → 1d? |  | 19.5d → 92d | 43 → 29 | constraint none → start no earlier than 2018-11-19 |
| 34 | Video Management | 2018-11-14 → 2018-11-23 (+9d) | 2018-11-16 → 2018-11-24 (+8d) |  |  | 38.5d → 60d | Help Center → 32 | constraint none → start no earlier than 2018-11-23 |
| 36 | User management with roles & entitlements | 2018-11-03 → 2018-11-22 (+19d) | 2018-11-06 → 2018-11-23 (+17d) |  |  | 38.5d → 90d | Confirm Database Design → 33 | constraint finish no earlier than 2018-11-03 → start no earlier than 2018-11-22; resources Developer 1 → Developer 2 |
| 37 | Dashboard Updates | 2018-11-30 → 2018-11-26 (-4d) | 2018-12-04 → 2018-11-28 (-6d) |  |  | 38d → 88d | Billing, Invoicing, End userTx summary → none | constraint start no earlier than 2018-11-30 → start no earlier than 2018-11-26 |
| 39 | End user Listing: Year wise user management screen | 2018-11-26 → 2018-12-29 (+33d) | 2018-11-28 → 2018-12-31 (+33d) |  |  | 19.5d → 61d | 33 → 36 | constraint none → start no earlier than 2018-12-29; resources Developer 2 → Developer 1 |
| 42 | Implementaion of domain name instead of IP | 2018-12-05 → 2018-12-06 (+1d) | 2018-12-06 → 2018-12-07 (+1d) |  |  | 19d → 66d | 26 → 35 | resources Developer 2 → Developer 1 |
| 43 | Plan Upgrade (change selected plan) | 2018-11-16 → 2018-12-06 (+20d) | 2018-11-21 → 2018-12-11 (+20d) |  |  | 19.5d → 57d | 31 → 40 | constraint none → start no earlier than 2018-12-05 |
| 44 | Implementaion of Help | 2018-12-07 → 2018-12-10 (+3d) | 2018-12-11 → 2018-12-12 (+1d) |  |  | 19d → 66d |  | constraint none → start no earlier than 2018-12-07; resources Developer 2 → Developer 1 |
| 45 | Enabling and disabling feature for the master data in the admin |  |  |  |  | 19d → 57d | 44 → 43 | constraint none → start no earlier than 2018-12-11 |
| 46 | All the Deduction tabs to be consolidated to a single page/form |  |  |  |  | 19d → 57d |  | constraint none → start no earlier than 2018-12-12 |
| 47 | New main tab for foreign assests with new features | 2018-12-14 → 2018-12-13 (-1d) | 2018-12-20 → 2018-12-18 (-2d) |  |  | 19d → 66d | 46 → 44 | constraint none → start no earlier than 2018-12-12; resources Developer 2 → Developer 1 |
| 48 | Dashboard - Tax summary 2 tabs to show revised | 2018-12-21 → 2018-12-19 (-2d) | 2018-12-21 → 2018-12-19 (-2d) |  |  | 20d → 66d | API Integration, Japanese, Misc → 47 | constraint none → start no earlier than 2018-12-19 |
| 49 | Revise return | 2018-12-21 → 2018-12-14 (-7d) | 2018-12-21 → 2018-12-14 (-7d) |  |  | 19d → 57d | 47 → 46 | constraint none → start no earlier than 2018-12-13 |
| 50 | Review to show sub section status | 2018-12-22 → 2018-12-20 (-2d) | 2018-12-22 → 2018-12-20 (-2d) |  |  | 20d → 66d |  | constraint none → start no earlier than 2018-12-20 |
| 51 | Plan change auditing | 2018-12-22 → 2018-12-15 (-7d) | 2018-12-24 → 2018-12-17 (-7d) |  |  | 19d → 57d |  | constraint none → start no earlier than 2018-12-14 |
| 52 | Currency field along with amount field | 2018-12-24 → 2018-12-21 (-3d) | 2018-12-27 → 2018-12-25 (-2d) |  |  | 20d → 66d |  | constraint none → start no earlier than 2018-12-21 |
| 53 | The system should alert the user during Multiple Login. Upon clicking “Confirm”, the system should log out the user from the previous session. | 2018-12-25 → 2018-12-18 (-7d) | 2018-12-25 → 2018-12-19 (-6d) | 1d → 2d |  | 19d → 57d |  | constraint none → finish no earlier than 2018-12-18 |
| 54 | Minor changes(Estimated) | 2018-12-26 → 2018-12-20 (-6d) | 2018-12-28 → 2018-12-22 (-6d) |  |  | 19d → 57d |  | constraint none → start no earlier than 2018-12-19 |
| 55 | Development complete | 2018-12-28 → 2018-12-25 (-3d) | 2018-12-28 → 2018-12-25 (-3d) |  |  | 19d → 66d | 54 → 52 |  |
| 56 | **Web API** | 2018-10-22 → 2018-11-23 (+32d) | 2018-11-21 → 2018-12-31 (+40d) | 25d → 32d |  | 0d → none |  |  |
| 57 | Login and Sign Up Management | 2018-10-22 → 2018-11-24 (+33d) | 2018-10-23 → 2018-11-28 (+36d) | 2d → 4d |  | 0d → 36d |  | was named Login Management; constraint start no earlier than 2018-10-22 → finish no earlier than 2018-11-28 |
| 58 | Assessment year | 2018-10-24 → 2018-11-29 (+36d) | 2018-10-24 → 2018-11-29 (+36d) |  |  | 0d → 36d |  | constraint none → start no earlier than 2018-11-29 |
| 59 | Plan selection | 2018-10-25 → 2018-11-30 (+36d) | 2018-10-26 → 2018-12-01 (+36d) |  |  | 0d → 36d |  | constraint none → start no earlier than 2018-11-30 |
| 60 | XML Uploads | 2018-10-29 → 2018-12-03 (+35d) | 2018-10-30 → 2018-12-04 (+35d) |  |  | 0d → 36d |  | constraint none → start no earlier than 2018-12-03 |
| 61 | Tax filing | 2018-10-31 → 2018-12-05 (+35d) | 2018-11-17 → 2018-12-22 (+35d) |  |  | 0d → 36d |  | constraint none → start no earlier than 2018-12-05 |
| 62 | Dashboard Updates | 2018-11-19 → 2018-12-27 (+38d) | 2018-11-21 → 2018-12-29 (+38d) |  |  | 0d → 33d |  | constraint none → start no earlier than 2018-12-27 |
| 63 | Development complete | 2018-11-21 → 2018-12-31 (+40d) | 2018-11-21 → 2018-12-31 (+40d) | 0d → 1d |  | 0d → none |  |  |
| 64 | **Japanese Langauge integration** | 2018-11-21 → 2018-12-31 (+40d) | 2019-01-08 → 2019-02-05 (+28d) | 35d → 28d |  | 0d → 34d |  |  |
| 65 | Create Resource File | 2018-11-21 → 2018-12-31 (+40d) | 2018-11-21 → 2018-12-31 (+40d) |  |  | 0d → 33d |  | constraint none → start no earlier than 2018-12-05; resources none → Developer 3 |
| 66 | Create Multi language Routes and Route handling mechanism (includes SEO) | 2018-11-21 → 2018-12-31 (+40d) | 2018-11-21 → 2018-12-31 (+40d) |  |  | 0d → 33d |  | constraint none → start no earlier than 2018-12-05; resources none → Developer 3 |
| 67 | Activate Culture & Upgrade content, labels and form values | 2018-11-21 → 2018-12-31 (+40d) | 2018-11-21 → 2018-12-31 (+40d) |  |  | 0d → 33d |  | constraint none → start no earlier than 2018-12-05; resources none → Developer 3 |
| 68 | Total # of pages to modify 78 | 2018-11-22 → 2019-01-01 (+40d) | 2019-01-08 → 2019-02-05 (+28d) | 35d → 25d |  | 0d → 34d |  | constraint start no earlier than 2018-11-21 → start no earlier than 2018-12-05 |
| 69 | Development complete | 2019-01-08 → 2019-02-05 (+28d) | 2019-01-08 → 2019-02-05 (+28d) |  |  | 12d → 33d |  | constraint none → start no earlier than 2019-01-03 |
| 70 | **Mobile App** | 2018-10-15 → 2018-11-22 (+38d) | 2019-01-16 → 2019-02-11 (+26d) | 71.01d → 66d |  | 7.99d → 7d |  |  |
| 71 | Splash Screen, Login etc. | 2018-10-30 → 2018-11-22 (+23d) | 2018-10-31 → 2018-11-23 (+23d) |  |  | 0.99d → 33.5d | Wire Frames → none | constraint none → start no earlier than 2018-11-22 |
| 72 | Registration | 2018-11-03 → 2018-11-24 (+21d) | 2018-11-05 → 2018-11-26 (+21d) | 1d → 2d |  | 0.99d → 33.5d | 73 → 71 | constraint none → finish no earlier than 2018-11-26 |
| 73 | Home page | 2018-11-03 → 2018-11-27 (+24d) | 2018-11-03 → 2018-11-27 (+24d) | 0.75d → 1d |  | 0.99d → 33.5d | 74 → 72 | constraint none → start no earlier than 2018-11-27 |
| 74 | Dashboard(Tax Summary, Chellan, Filter, Uploaded docs, ITR related docs, Approve, Notifications, Yearly Summary) | 2018-11-01 → 2018-11-28 (+27d) | 2018-11-02 → 2018-11-29 (+27d) |  |  | 0.99d → 33.5d | 71 → 73 | constraint none → start no earlier than 2018-11-28 |
| 75 | OTP verification page | 2018-11-05 → 2018-11-30 (+25d) | 2018-11-06 → 2018-11-30 (+24d) | 0.38d → 4h |  | 0.99d → none | 72 → 74 | constraint none → start no earlier than 2018-11-30 |
| 76 | Video | 2018-11-06 → 2018-11-30 (+24d) | 2018-11-07 → 2018-12-01 (+24d) | 1d → 1.5d |  | 0.99d → 33.5d |  | constraint none → start no earlier than 2018-11-30 |
| 77 | Pricing and comparision page | 2018-11-07 → 2018-12-03 (+26d) | 2018-11-09 → 2018-12-04 (+25d) |  |  | 0.99d → 33.5d |  | constraint none → start no earlier than 2018-12-03 |
| 78 | Platinum Plan Notification | 2018-11-09 → 2018-12-05 (+26d) | 2018-11-09 → 2018-12-05 (+26d) | 0.38d → 4h |  | 0.99d → none |  |  |
| 79 | XML upload from different storage space | 2018-11-09 → 2018-12-05 (+26d) | 2018-11-12 → 2018-12-06 (+24d) | 1d → 1.5d |  | 0.99d → 33.5d |  | constraint none → start no earlier than 2018-12-05 |
| 80 | Implementaion of Help (video, image) | 2018-11-12 → 2018-12-07 (+25d) | 2018-11-14 → 2018-12-10 (+26d) |  |  | 0.99d → 33.5d |  | constraint none → start no earlier than 2018-12-07 |
| 81 | Plan change auditing | 2018-11-14 → 2018-12-10 (+26d) | 2018-11-16 → 2018-12-12 (+26d) |  |  | 0.99d → 32.5d |  | constraint none → start no earlier than 2018-12-10 |
| 82 | Revise return | 2018-11-16 → 2018-12-12 (+26d) | 2018-11-17 → 2018-12-13 (+26d) |  |  | 0.99d → 32.5d |  | constraint none → start no earlier than 2018-12-12 |
| 83 | Tax summary 2 tabs to show revised | 2018-11-17 → 2018-12-13 (+26d) | 2018-11-19 → 2018-12-14 (+25d) |  |  | 0.99d → 32.5d |  | constraint none → start no earlier than 2018-12-13 |

| ID | Task | Start | Finish | Duration | Total float | Predecessors | Other |
| --- | --- | --- | --- | --- | --- | --- | --- |
| 84 | Currency field along with amount field (Design Change) | 2018-11-19 → 2018-12-15 (+26d) | 2018-11-21 → 2018-12-17 (+26d) |  | 0.99d → 32d |  | constraint none → start no earlier than 2018-12-15 |
| 85 | XML prefill controls to be grouped (only Design Change) | 2018-11-21 → 2018-12-18 (+27d) | 2018-11-22 → 2018-12-18 (+26d) |  | 0.99d → 32d |  | constraint none → start no earlier than 2018-12-18 |
| 86 | Foreign Assets | 2018-11-22 → 2018-12-19 (+27d) | 2018-11-29 → 2018-12-24 (+25d) |  | 0.99d → 32d |  | constraint none → start no earlier than 2018-12-19 |
| 87 | Start Tax Return (Year / Package selection, Prefill XML / PAN) | 2018-11-29 → 2018-12-26 (+27d) | 2018-12-03 → 2018-12-27 (+24d) |  | 0.99d → 31d |  | constraint none → start no earlier than 2018-12-26 |
| 88 | Personal details | 2018-12-03 → 2018-12-28 (+25d) | 2018-12-05 → 2018-12-29 (+24d) |  | 0.99d → 31d |  | constraint none → start no earlier than 2018-12-28 |
| 89 | Bank Details | 2018-12-05 → 2019-01-02 (+28d) | 2018-12-07 → 2019-01-03 (+27d) |  | 0.99d → 29d |  | constraint none → start no earlier than 2019-01-02 |
| 90 | Assets & Liabelities | 2018-12-07 → 2019-01-04 (+28d) | 2018-12-12 → 2019-01-07 (+26d) |  | 0.99d → 29d |  | constraint none → start no earlier than 2019-01-04 |
| 91 | Salary | 2018-12-12 → 2019-01-09 (+28d) | 2018-12-14 → 2019-01-10 (+27d) |  | 0.99d → 28d |  | constraint none → start no earlier than 2019-01-09 |
| 92 | Other Income | 2018-12-14 → 2019-01-11 (+28d) | 2018-12-19 → 2019-01-15 (+27d) |  | 0.99d → 28d |  | constraint none → start no earlier than 2019-01-11 |
| 93 | House property | 2018-12-19 → 2019-01-16 (+28d) | 2018-12-22 → 2019-01-18 (+27d) |  | 0.99d → 28d |  | constraint none → start no earlier than 2019-01-16 |
| 94 | Section 80 | 2018-12-22 → 2019-01-19 (+28d) | 2018-12-26 → 2019-01-22 (+27d) |  | 0.99d → 28d |  | constraint none → start no earlier than 2019-01-19 |
| 95 | More Deductions (80E, 80CCC etc.) | 2018-12-26 → 2019-01-23 (+28d) | 2018-12-31 → 2019-01-25 (+25d) |  | 0.99d → 28d |  | constraint none → start no earlier than 2019-01-23 |
| 96 | Taxes paid (Upload 26AS, Challan Details, Summary & review, PDF report, Payment) | 2018-12-31 → 2019-01-28 (+28d) | 2019-01-03 → 2019-01-30 (+27d) |  | 0.99d → 28d |  | constraint none → start no earlier than 2019-01-28 |
| 97 | Help center (Chat bot, Whats new) | 2019-01-03 → 2019-01-31 (+28d) | 2019-01-08 → 2019-02-04 (+27d) |  | 0.99d → 28d |  | constraint none → start no earlier than 2019-01-31 |
| 98 | Static Pages (FAQ, T&C, Privacy, legal, support, Contact) | 2019-01-08 → 2019-02-05 (+28d) | 2019-01-11 → 2019-02-07 (+27d) |  | 0.99d → 28d |  | constraint none → start no earlier than 2019-02-05 |
| 99 | API integration | 2019-01-11 → 2019-02-08 (+28d) | 2019-01-16 → 2019-02-11 (+26d) |  | 0.99d → 28d |  | constraint none → start no earlier than 2019-02-08 |
| 100 | **Testing** | 2018-11-01 → 2018-11-20 (+19d) | 2019-02-05 → 2019-03-20 (+43d) | 72d → 96d |  |  |  |
| 103 | **Web Dev** | 2018-11-01 → 2018-11-26 (+25d) | 2018-11-09 → 2018-11-30 (+21d) | 8d → 5d | 36d → 81d |  |  |
| 104 | Test Cases | 2018-11-06 → 2018-11-26 (+20d) | 2018-11-09 → 2018-11-30 (+21d) | 4d → 5d | 10d → 81d | Test scenarios → 101 | constraint finish no earlier than 2018-10-18 → start no earlier than 2018-11-26 |
| 105 | **Mobile Dev** | 2018-11-15 → 2018-12-03 (+18d) | 2018-11-23 → 2018-12-10 (+17d) | 8d → 6d | 54d → 80d |  |  |
| 106 | Test Cases | 2018-11-20 → 2018-12-03 (+13d) | 2018-11-23 → 2018-12-10 (+17d) | 4d → 6d | 45d → 80d | Test Scenarios → 104 | constraint none → finish no earlier than 2018-12-10 |
| 107 | **Functional Testing** | 2018-11-19 → 2018-12-04 (+15d) | 2019-01-28 → 2019-03-05 (+36d) | 52d → 73d | 7d → 0d |  |  |
| 108 | **Web App** | 2018-11-19 → 2018-12-04 (+15d) | 2019-01-28 → 2019-01-18 (-10d) | 52d → 38d | 7d → none |  |  |
| 110 | Module testing | 2018-11-19 → 2018-12-24 (+35d) | 2018-12-14 → 2018-12-27 (+13d) | 20d → 4d | 4d → 57d | 104 → 54 | constraint start no earlier than 2018-11-19 → start no earlier than 2018-12-24 |
| 111 | Modify code | 2019-01-09 → 2018-12-28 (-12d) | 2019-01-14 → 2019-01-01 (-13d) |  | 0d → 57d | 68 → 110 | constraint finish no earlier than 2018-12-28 → start no earlier than 2018-12-28; resources Developer 1; Developer 2 → none |
| 112 | Re-test modified code | 2019-01-15 → 2019-01-02 (-13d) | 2019-01-28 → 2019-01-05 (-23d) | 10d → 4d | 0d → 57d |  |  |
| 117 | **Mobile App** | 2018-12-03 → 2019-02-07 (+66d) | 2019-01-28 → 2019-03-05 (+36d) | 41.01d → 21d | 7.99d → none |  |  |
| 118 | Module Testing | 2018-12-03 → 2019-02-07 (+66d) | 2018-12-27 → 2019-02-18 (+53d) | 20d → 10d | 17d → 1d | 104 → none | constraint start no earlier than 2018-12-03 → start no earlier than 2019-02-07 |
| 119 | Identify anomalies to product specifications | 2019-01-01 → 2019-02-19 (+49d) | 2019-01-01 → 2019-02-20 (+50d) | 1d → 2d | 17d → 1d | Test component modules to product specifications → 118 | constraint none → start no earlier than 2019-02-19 |
| 120 | Modify code | 2019-01-16 → 2019-02-21 (+36d) | 2019-01-24 → 2019-02-22 (+29d) | 6d → 2d | 7.99d → 11d | 99 → 119 | constraint none → start no earlier than 2019-02-21 |
| 121 | Re-test modified code | 2019-01-24 → 2019-02-25 (+32d) | 2019-01-28 → 2019-03-05 (+36d) | 2d → 7d | 7.99d → 11d |  | constraint none → start no earlier than 2019-02-25 |
| 122 | **Integration Testing** | 2019-01-29 → 2019-01-07 (-22d) | 2019-02-05 → 2019-03-20 (+43d) | 6d → 56d |  |  |  |
| 124 | Test module integration | 2019-01-29 → 2019-01-07 (-22d) | 2019-01-30 → 2019-01-18 (-12d) | 2d → 10d | 0d → 37d | Functional testing complete → 114 | constraint none → start no earlier than 2019-01-07 |
| 125 | Identify anomalies to specifications | 2019-01-31 → 2019-01-19 (-12d) | 2019-01-31 → 2019-01-19 (-12d) |  | 0d → 37d |  | constraint none → start no earlier than 2019-01-19 |
| 126 | Modify code | 2019-02-01 → 2019-01-21 (-11d) | 2019-02-04 → 2019-01-22 (-13d) |  | 0d → 37d |  | constraint none → start no earlier than 2019-01-21 |
| 127 | Re-test modified code | 2019-02-05 → 2019-01-23 (-13d) | 2019-02-05 → 2019-01-25 (-11d) | 1d → 3d | 0d → 37d |  | constraint none → start no earlier than 2019-01-23 |
| 128 | Integration testing complete | 2019-02-05 → 2019-01-28 (-8d) | 2019-02-05 → 2019-01-30 (-6d) | 0d → 3d | 0d → 37d |  | constraint none → start no earlier than 2019-01-28 |
| 135 | **Deployment** | 2019-02-05 → 2019-01-30 (-6d) | 2019-02-06 → 2019-03-21 (+43d) | 1d → 38d |  |  |  |
| 136 | Determine final deployment strategy | 2019-02-05 → 2019-01-30 (-6d) | 2019-02-05 → 2019-01-30 (-6d) |  | 0d → 36d |  |  |
| 137 | Deploy web+admin+Japanese Applications | 2019-02-06 → 2019-01-31 (-6d) | 2019-02-06 → 2019-01-31 (-6d) |  | 0d → 37d |  | was named Deploy software |
| 139 | Deployment complete | 2019-02-06 → 2019-03-21 (+43d) | 2019-02-06 → 2019-03-21 (+43d) |  |  | 137 → 138 |  |
